# WBS

Schedule from MS Project, 2022-10-24 to 2023-02-13, 6 hours a day, costs in €, A marks actual dates.

## Calendars

- Standard: Mon-Fri 09:00-13:00, 14:00-18:00; Sat-Sun off.

## Resources

| Resource | Rate |
| --- | --- |
| Giovanni Mercurio | 35 |
| Luca Pastore | 35 |
| Giovanni Borrelli | 35 |
| Angelo Zuottolo | 35 |
| Agostino Andrea Mangia | 35 |
| Gerardo Di Muro | 35 |
| 2 |  |
| 3 |  |

## Schedule

| ID | WBS | Task | Type | Duration | Start | Finish | Predecessors | Complete | Remaining | Actual start | Resources | Work | Actual work | Cost | Actual cost |
| --- | --- | --- | --- | --- | --- | --- | --- | --- | --- | --- | --- | --- | --- | --- | --- |
| 1 | 1 | **1. HealthCare** |  | 102.67d? | 2022-10-28 | 2023-02-13 |  | 96% | 3.87d? | 2022-10-24 |  | 5229.33h | 4941.33h | 183,026.67 | 172,946.67 |
| 2 | 1.1 | **1.1 Requirement Elicitation and Analysis** |  | 25.33d | 2022-10-28 A | 2022-11-23 A |  | 100% |  |  |  | 581.33h | 581.33h | 20,346.67 | 20,346.67 |
| 3 | 1.1.1 | **1.1.1 Requirement Elicitation** |  | 17.3d | 2022-10-28 A | 2022-11-15 A |  | 100% |  |  |  | 245.33h | 245.33h | 8,586.67 | 8,586.67 |
| 4 | 1.1.1.1 | **1.1.1.1 Introduzione** |  | 0.06d | 2022-11-07 A | 2022-11-07 A |  | 100% |  |  |  | 0.67h | 0.67h | 23.33 | 23.33 |
| 5 | 1.1.1.1.1 | 1.1.1.1.1 Introduzione con individuazione dell'attore e del committente del sistema | manual | 20min | 2022-11-07 A | 2022-11-07 A |  | 100% |  |  | Agostino Andrea Mangia; Giovanni Borrelli | 0.67h | 0.67h | 23.33 | 23.33 |
| 6 | 1.1.1.2 | 1.1.1.2 Analisi della situazione attuale | manual | 10min | 2022-11-07 A | 2022-11-07 A |  | 100% |  |  | Angelo Zuottolo; Giovanni Mercurio | 0.33h | 0.33h | 11.67 | 11.67 |
| 7 | 1.1.1.3 | **1.1.1.3 Analisi del sistema proposto** |  | 6227min | 2022-10-28 A | 2022-11-15 A |  | 100% |  |  |  | 244.33h | 244.33h | 8,551.67 | 8,551.67 |
| 8 | 1.1.1.3.1 | 1.1.1.3.1 Costruzione dell'activity diagram | manual | 10min | 2022-11-15 A | 2022-11-15 A |  | 100% |  |  | Agostino Andrea Mangia; Luca Pastore | 0.33h | 0.33h | 11.67 | 11.67 |
| 9 | 1.1.1.3.2 | 1.1.1.3.2 Individuazione RF | manual | 30min | 2022-11-07 A | 2022-11-07 A |  | 100% |  |  | Agostino Andrea Mangia; Angelo Zuottolo; Giovanni Borrelli; Giovanni Mercurio; Luca Pastore; Gerardo Di Muro | 3h | 3h | 105 | 105 |
| 10 | 1.1.1.3.3 | 1.1.1.3.3 Individuazione RNF | manual | 10min | 2022-11-08 A | 2022-11-08 A |  | 100% |  |  | Agostino Andrea Mangia; Angelo Zuottolo; Gerardo Di Muro; Giovanni Borrelli; Giovanni Mercurio; Luca Pastore | 1h | 1h | 35 | 35 |
| 11 | 1.1.1.3.4 | 1.1.1.3.4 Scrittura di scenari | manual | 960min | 2022-10-28 A | 2022-10-31 A |  | 100% |  |  | Agostino Andrea Mangia; Angelo Zuottolo; Gerardo Di Muro; Giovanni Borrelli; Giovanni Mercurio; Luca Pastore | 96h | 96h | 3,360 | 3,360 |
| 12 | 1.1.1.3.5 | 1.1.1.3.5 Scrittura casi d'uso | manual | 1440min | 2022-11-01 A | 2022-11-03 A |  | 100% |  |  | Agostino Andrea Mangia; Angelo Zuottolo; Gerardo Di Muro; Giovanni Borrelli; Giovanni Mercurio; Luca Pastore | 144h | 144h | 5,040 | 5,040 |
| 13 | 1.1.2 | **1.1.2 Requirement Analysis** |  | 6.67d | 2022-11-16 A | 2022-11-22 A |  | 100% |  |  |  | 320h | 320h | 11,200 | 11,200 |
| 14 | 1.1.2.1 | **1.1.2.1 Costruzione del modello ad oggetti** |  | 4d | 2022-11-16 A | 2022-11-18 A |  | 100% |  |  |  | 144h | 144h | 5,040 | 5,040 |
| 15 | 1.1.2.1.1 | 1.1.2.1.1 Individuazione degli oggetti | manual | 2.67d | 2022-11-16 A | 2022-11-17 A | 3 | 100% |  |  | Angelo Zuottolo; Gerardo Di Muro; Giovanni Borrelli; Giovanni Mercurio; Luca Pastore; Agostino Andrea Mangia | 96h | 96h | 3,360 | 3,360 |
| 16 | 1.1.2.1.2 | 1.1.2.1.2 Costruzione class diagram | manual | 1.33d | 2022-11-18 A | 2022-11-18 A | 15, 3 | 100% |  |  | Agostino Andrea Mangia; Angelo Zuottolo; Gerardo Di Muro; Giovanni Borrelli; Giovanni Mercurio; Luca Pastore | 48h | 48h | 1,680 | 1,680 |
| 17 | 1.1.2.2 | **1.1.2.2 Costruzione del modello dinamico** |  | 2.67d | 2022-11-21 A | 2022-11-22 A |  | 100% |  |  |  | 176h | 176h | 6,160 | 6,160 |
| 18 | 1.1.2.2.1 | 1.1.2.2.1 Costruzione dei sequence diagram | manual | 1.33d | 2022-11-21 A | 2022-11-21 A | 15 | 100% |  |  | Agostino Andrea Mangia; Angelo Zuottolo; Gerardo Di Muro; Giovanni Borrelli; Giovanni Mercurio; Luca Pastore | 48h | 48h | 1,680 | 1,680 |
| 19 | 1.1.2.2.2 | 1.1.2.2.2 Costruzione degli state chart diagram | manual | 1.33d | 2022-11-21 A | 2022-11-21 A | 15 | 100% |  |  | Angelo Zuottolo; Gerardo Di Muro; Giovanni Borrelli; Giovanni Mercurio | 32h | 32h | 1,120 | 1,120 |
| 20 | 1.1.2.2.3 | 1.1.2.2.3 Costruzione del path navigazionale | manual | 1.33d | 2022-11-22 A | 2022-11-22 A | 18 | 100% |  |  | Agostino Andrea Mangia; Angelo Zuottolo; Gerardo Di Muro; Giovanni Borrelli; Giovanni Mercurio; Luca Pastore | 48h | 48h | 1,680 | 1,680 |
| 21 | 1.1.2.2.4 | 1.1.2.2.4 Costruzione dei mockups | manual | 1.33d | 2022-11-22 A | 2022-11-22 A | 18, 20 | 100% |  |  | Agostino Andrea Mangia; Angelo Zuottolo; Gerardo Di Muro; Giovanni Borrelli; Giovanni Mercurio; Luca Pastore | 48h | 48h | 1,680 | 1,680 |
| 22 | 1.1.3 | 1.1.3 Drafting and revision | manual | 1.33d | 2022-11-23 A | 2022-11-23 A |  | 100% |  |  | Angelo Zuottolo; Giovanni Mercurio | 16h | 16h | 560 | 560 |
| 23 | 1.2 | **1.2 System Design** |  | 42.67d | 2022-10-24 A | 2022-12-06 A |  | 100% |  |  |  | 504h | 504h | 17,640 | 17,640 |
| 24 | 1.2.1 | **1.2.1 Introduzione** |  | 2.67d | 2022-11-23 A | 2022-11-24 A |  | 100% |  |  |  | 192h | 192h | 6,720 | 6,720 |
| 25 | 1.2.1.1 | 1.2.1.1 Design Goal | manual | 2.67d | 2022-11-23 A | 2022-11-24 A |  | 100% |  |  | Agostino Andrea Mangia; Angelo Zuottolo; Gerardo Di Muro; Giovanni Borrelli; Giovanni Mercurio; Luca Pastore | 96h | 96h | 3,360 | 3,360 |
| 26 | 1.2.1.2 | 1.2.1.2 Trade-off | manual | 2.67d | 2022-11-23 A | 2022-11-24 A |  | 100% |  |  | Agostino Andrea Mangia; Angelo Zuottolo; Gerardo Di Muro; Giovanni Borrelli; Giovanni Mercurio; Luca Pastore | 96h | 96h | 3,360 | 3,360 |
| 27 | 1.2.2 | 1.2.2 Architettura dei sistemi simili | manual | 2.67d | 2022-10-24 A | 2022-10-25 A |  | 100% |  |  | Gerardo Di Muro; Luca Pastore | 32h | 32h | 1,120 | 1,120 |

| ID | WBS | Task | Type | Duration | Start | Finish | Predecessors | Complete | Constraint | Resources | Work | Actual work | Cost | Actual cost |
| --- | --- | --- | --- | --- | --- | --- | --- | --- | --- | --- | --- | --- | --- | --- |
| 28 | 1.2.3 | **1.2.3 Architettura del sistema proposto** |  | 4d | 2022-11-25 A | 2022-11-29 A |  | 100% |  |  | 216h | 216h | 7,560 | 7,560 |
| 29 | 1.2.3.1 | **1.2.3.1 Decomposizione in sottosistemi** |  | 4d | 2022-11-25 A | 2022-11-29 A |  | 100% |  |  | 216h | 216h | 7,560 | 7,560 |
| 30 | 1.2.3.1.1 | 1.2.3.1.1 Architettura del sistema e sottosistemi individuati | manual | 1.33d | 2022-11-25 A | 2022-11-25 A |  | 100% |  | Agostino Andrea Mangia; Angelo Zuottolo; Gerardo Di Muro; Giovanni Borrelli; Giovanni Mercurio; Luca Pastore | 48h | 48h | 1,680 | 1,680 |
| 31 | 1.2.3.1.2 | 1.2.3.1.2 Deployment diagram | manual | 1.33d | 2022-11-25 A | 2022-11-25 A |  | 100% |  | Agostino Andrea Mangia; Angelo Zuottolo; Gerardo Di Muro; Giovanni Borrelli; Giovanni Mercurio; Luca Pastore | 48h | 48h | 1,680 | 1,680 |
| 32 | 1.2.3.1.3 | 1.2.3.1.3 Mapping hardware/software | manual | 1.33d | 2022-11-28 A | 2022-11-28 A |  | 100% |  | Luca Pastore | 8h | 8h | 280 | 280 |
| 33 | 1.2.3.1.4 | 1.2.3.1.4 Gestione dati persistenti | manual | 1.33d | 2022-11-28 A | 2022-11-28 A |  | 100% |  | Agostino Andrea Mangia; Angelo Zuottolo; Gerardo Di Muro; Giovanni Borrelli; Giovanni Mercurio | 40h | 40h | 1,400 | 1,400 |
| 34 | 1.2.3.1.5 | 1.2.3.1.5 Controllo degli accessi e sicurezza | manual | 1.33d | 2022-11-28 A | 2022-11-28 A |  | 100% |  | Gerardo Di Muro; Giovanni Mercurio; Agostino Andrea Mangia | 24h | 24h | 840 | 840 |
| 35 | 1.2.3.1.6 | 1.2.3.1.6 Controllo del flusso globale del sistema | manual | 1.33d | 2022-11-29 A | 2022-11-29 A |  | 100% |  | Agostino Andrea Mangia; Gerardo Di Muro; Giovanni Mercurio | 24h | 24h | 840 | 840 |
| 36 | 1.2.3.1.7 | 1.2.3.1.7 Condizioni limite | manual | 1.33d | 2022-11-29 A | 2022-11-29 A |  | 100% |  | Angelo Zuottolo; Giovanni Borrelli; Luca Pastore | 24h | 24h | 840 | 840 |
| 37 | 1.2.4 | 1.2.4 Servizi dei sottosistemi | manual | 1.33d | 2022-12-02 A | 2022-12-02 A |  | 100% |  | Agostino Andrea Mangia; Angelo Zuottolo; Gerardo Di Muro; Giovanni Borrelli; Giovanni Mercurio; Luca Pastore | 48h | 48h | 1,680 | 1,680 |
| 38 | 1.2.5 | 1.2.5 Drafting and revision | manual | 1.33d | 2022-12-06 A | 2022-12-06 A | 2, 24, 27, 28, 37 | 100% |  | Agostino Andrea Mangia; Giovanni Borrelli | 16h | 16h | 560 | 560 |
| 39 | 1.3 | **1.3 System Test Design** |  | 4d | 2022-12-07 A | 2022-12-09 A |  | 100% |  |  | 112h | 112h | 3,920 | 3,920 |
| 40 | 1.3.1 | 1.3.1 Identificazione casi di test | manual | 1.33d | 2022-12-07 A | 2022-12-07 A | 23 | 100% |  | Agostino Andrea Mangia; Angelo Zuottolo; Gerardo Di Muro; Giovanni Borrelli; Giovanni Mercurio; Luca Pastore | 48h | 48h | 1,680 | 1,680 |
| 41 | 1.3.2 | 1.3.2 Scrittura casi di test | manual | 1.33d | 2022-12-08 A | 2022-12-08 A | 23 | 100% |  | Agostino Andrea Mangia; Angelo Zuottolo; Gerardo Di Muro; Giovanni Borrelli; Giovanni Mercurio; Luca Pastore | 48h | 48h | 1,680 | 1,680 |
| 42 | 1.3.3 | 1.3.3 Revision | manual | 1.33d | 2022-12-09 A | 2022-12-09 A | 40, 41 | 100% |  | Gerardo Di Muro; Luca Pastore | 16h | 16h | 560 | 560 |
| 43 | 1.4 | 1.4 Intermediate release | milestone, manual | 0d | 2022-12-12 A | 2022-12-12 A |  | 100% |  |  |  |  |  |  |
| 44 | 1.5 | **1.5 Object Design** |  | 17.33d | 2022-12-14 A | 2022-12-30 A | 2, 23, 39, 43 | 100% |  |  | 560h | 560h | 19,600 | 19,600 |
| 45 | 1.5.1 | **1.5.1 Introduzione** |  | 2.67d | 2022-12-14 A | 2022-12-15 A |  | 100% |  |  | 64h | 64h | 2,240 | 2,240 |
| 46 | 1.5.1.1 | 1.5.1.1 Trade-off |  | 2.67d | 2022-12-14 A | 2022-12-15 A |  | 100% | finish no earlier than 2022-12-15 | Agostino Andrea Mangia | 16h | 16h | 560 | 560 |
| 47 | 1.5.1.2 | 1.5.1.2 Componenti off-the-shelf | manual | 2.67d | 2022-12-14 A | 2022-12-15 A |  | 100% |  | Giovanni Borrelli | 16h | 16h | 560 | 560 |
| 48 | 1.5.1.3 | 1.5.1.3 Design pattern | manual | 2.67d | 2022-12-14 A | 2022-12-15 A |  | 100% |  | Luca Pastore; Angelo Zuottolo | 32h | 32h | 1,120 | 1,120 |
| 49 | 1.5.2 | **1.5.2 Packages** |  | 5.33d | 2022-12-14 A | 2022-12-19 A |  | 100% |  |  | 128h | 128h | 4,480 | 4,480 |
| 50 | 1.5.2.1 | 1.5.2.1 Identificazione dei packages | manual | 2.67d | 2022-12-14 A | 2022-12-15 A | 37 | 100% |  | Gerardo Di Muro; Giovanni Mercurio | 32h | 32h | 1,120 | 1,120 |
| 51 | 1.5.2.2 | 1.5.2.2 Identificazione delle classi | manual | 2.67d | 2022-12-16 A | 2022-12-19 A |  | 100% |  | Agostino Andrea Mangia; Angelo Zuottolo; Gerardo Di Muro; Giovanni Borrelli; Giovanni Mercurio; Luca Pastore | 96h | 96h | 3,360 | 3,360 |

| ID | WBS | Task | Type | Duration | Start | Finish | Predecessors | Complete | Remaining | Actual start | Resources | Work | Actual work | Cost | Actual cost |
| --- | --- | --- | --- | --- | --- | --- | --- | --- | --- | --- | --- | --- | --- | --- | --- |
| 52 | 1.5.3 | **1.5.3 Interfacce delle classi** |  | 9.33d | 2022-12-20 A | 2022-12-28 A |  | 100% |  |  |  | 112h | 112h | 3,920 | 3,920 |
| 53 | 1.5.3.1 | 1.5.3.1 Varianti precondizioni e postcondizioni | manual | 9.33d | 2022-12-20 A | 2022-12-28 A |  | 100% |  |  | Agostino Andrea Mangia; Luca Pastore | 112h | 112h | 3,920 | 3,920 |
| 54 | 1.5.4 | 1.5.4 Diagramma delle classi | manual | 9.33d | 2022-12-20 A | 2022-12-28 A |  | 100% |  |  | Giovanni Borrelli; Gerardo Di Muro | 112h | 112h | 3,920 | 3,920 |
| 55 | 1.5.5 | 1.5.5 Drafting and revision | manual | 12d | 2022-12-20 A | 2022-12-30 A |  | 100% |  |  | Angelo Zuottolo; Giovanni Mercurio | 144h | 144h | 5,040 | 5,040 |
| 56 | 1.6 | **1.6 Implementation** |  | 40d | 2022-12-26 A | 2023-02-03 | 2, 23, 39, 44 | 90% | 3.93d |  |  | 2544h | 2256h | 89,040 | 78,960 |
| 57 | 1.6.1 | 1.6.1 Creazione database | manual | 21.33d | 2022-12-26 A | 2023-01-15 A |  | 100% |  |  | Angelo Zuottolo; Gerardo Di Muro; Giovanni Mercurio | 384h | 384h | 13,440 | 13,440 |
| 58 | 1.6.2 | 1.6.2 GUI (layout desktop) | manual | 20d | 2023-01-06 A | 2023-01-26 A | 57 | 100% |  |  | Agostino Andrea Mangia; Angelo Zuottolo; Gerardo Di Muro; Giovanni Borrelli; Giovanni Mercurio; Luca Pastore | 720h | 720h | 25,200 | 25,200 |
| 59 | 1.6.3 | 1.6.3 Implementazione delle funzionalità a priorità elevata | manual | 28d | 2023-01-06 A | 2023-02-03 |  | 71% | 8d |  | Agostino Andrea Mangia; Angelo Zuottolo; Gerardo Di Muro; Giovanni Borrelli; Giovanni Mercurio; Luca Pastore | 1008h | 720h | 35,280 | 25,200 |
| 60 | 1.6.4 | 1.6.4 Scrittura delle classi di test | manual | 12d | 2023-01-16 A | 2023-01-26 A |  | 100% |  |  | Agostino Andrea Mangia; Angelo Zuottolo; Gerardo Di Muro; Giovanni Borrelli; Giovanni Mercurio; Luca Pastore | 432h | 432h | 15,120 | 15,120 |
| 61 | 1.7 | **1.7 Testing** |  | 5.33d? | 2023-01-31 | 2023-02-03 A | 2, 23, 39, 43, 44, 56 | 100% |  | 2023-01-27 |  | 768h | 768h | 26,880 | 26,880 |
| 62 | 1.7.1 | 1.7.1 Test di unità | manual | 8d | 2023-01-27 A | 2023-02-03 A |  | 100% |  |  | Agostino Andrea Mangia; Angelo Zuottolo; Gerardo Di Muro; Giovanni Borrelli; Giovanni Mercurio; Luca Pastore | 288h | 288h | 10,080 | 10,080 |
| 63 | 1.7.2 | 1.7.2 Test di sistema | manual | 8d | 2023-01-27 A | 2023-02-03 A |  | 100% |  |  | Agostino Andrea Mangia; Angelo Zuottolo; Gerardo Di Muro; Giovanni Borrelli; Giovanni Mercurio; Luca Pastore | 288h | 288h | 10,080 | 10,080 |
| 64 | 1.7.3 | 1.7.3 Test Execution Report | manual | 5.33d | 2023-01-31 A | 2023-02-03 A |  | 100% |  |  | Giovanni Borrelli; Giovanni Mercurio | 64h | 64h | 2,240 | 2,240 |
| 65 | 1.7.4 | 1.7.4 Test Summary Report | manual | 5.33d | 2023-01-31 A | 2023-02-03 A |  | 100% |  |  | Giovanni Borrelli; Giovanni Mercurio | 64h | 64h | 2,240 | 2,240 |
| 66 | 1.7.5 | 1.7.5 Unit Test Report | manual | 1920min | 2023-01-31 A | 2023-02-03 A |  | 100% |  |  | Luca Pastore; Agostino Andrea Mangia | 64h | 64h | 2,240 | 2,240 |
| 67 | 1.8 | **1.8 Release** |  | 5.33d | 2023-02-03 | 2023-02-08 A | 2, 23, 39, 43, 44, 56, 61 | 100% |  | 2023-01-31 |  | 160h | 160h | 5,600 | 5,600 |
| 68 | 1.8.1 | 1.8.1 Revisione documentazione prodotta | manual | 960min | 2023-02-07 A | 2023-02-08 A |  | 100% |  |  | Agostino Andrea Mangia; Angelo Zuottolo; Gerardo Di Muro; Giovanni Borrelli; Giovanni Mercurio; Luca Pastore | 96h | 96h | 3,360 | 3,360 |
| 69 | 1.8.2 | 1.8.1 Manuale di Installazione | manual | 5.33d | 2023-01-31 A | 2023-02-03 A |  | 100% |  |  | Angelo Zuottolo; Gerardo Di Muro | 32h | 32h | 1,120 | 1,120 |
| 70 | 1.8.3 | 1.8.2 Manuale utente | manual | 5.33d | 2023-01-31 A | 2023-02-03 A |  | 100% |  |  | Giovanni Borrelli; Giovanni Mercurio | 32h | 32h | 1,120 | 1,120 |
